# infinity-beer

Schedule from ProjectLibre, 2022-01-21 to 2022-08-22.

## Calendars

- Standard: Mon-Fri 08:00-12:00, 13:00-17:00; Sat-Sun off. Exceptions (off unless hours are given): 2022-02-28 to 2022-03-02, 2022-03-31 to 2022-04-01, 2022-04-14 to 2022-04-15, 2022-04-20 to 2022-04-21, 2022-04-30 to 2022-05-01, 2022-05-09 to 2022-05-10, 2022-06-15 to 2022-06-16.

## Resources

| Resource | Rate |
| --- | --- |
| Não atribuído |  |
| Vinícius Bandeira | 50 |
| Eduardo Candido | 50 |
| Data Center | 15000 |
| Equipe de Programadores | 120 |
| Loja de Geladeira | 2500 |
| Project Owner |  |
| Dispositivos IOT | 350 |
| Montador do Protótipo | 40 |

## Schedule

| ID | WBS | Task | Duration | Start | Finish | Predecessors | Resources |
| --- | --- | --- | --- | --- | --- | --- | --- |
| 1 | 1 | **Criação Cervejeira Automatizada** | 145d | 2022-01-21 | 2022-08-22 |  |  |
| 2 | 1.1 | **1 - Definição do Projeto** | 2d | 2022-01-21 | 2022-01-24 |  |  |
| 3 | 1.1.1 | Desenho do escopo do projeto | 1d | 2022-01-21 | 2022-01-21 |  | Project Owner; Vinícius Bandeira; Eduardo Candido |
| 4 | 1.1.2 | Levantamento de recursos | 0.5d | 2022-01-24 | 2022-01-24 | 3 | Eduardo Candido; Vinícius Bandeira |
| 5 | 1.1.3 | Definição de tarefas e prazos | 0.5d | 2022-01-24 | 2022-01-24 | 4 | Vinícius Bandeira; Eduardo Candido |
| 6 | 1.2 | **2 - Implementação** | 127d | 2022-01-25 | 2022-07-29 |  |  |
| 7 | 1.2.1 | Aquisição de Cervejeiras e materiais de IOT | 4d | 2022-01-25 | 2022-01-28 | 5 | Loja de Geladeira [300%]; Dispositivos IOT [300%] |
| 8 | 1.2.2 | Aquisição de Data Centers | 1d | 2022-01-31 | 2022-01-31 | 7 | Data Center |
| 9 | 1.2.3 | Montagem do protótipo | 4d | 2022-02-01 | 2022-02-04 | 8 | Montador do Protótipo |
| 10 | 1.2.4 | Desenvolvimento do Back-end | 60d | 2022-02-07 | 2022-04-29 | 9 | Equipe de Programadores |
| 11 | 1.2.5 | Desenvolvimento do Front-end | 60d | 2022-05-02 | 2022-07-22 | 10 | Equipe de Programadores |
| 12 | 1.2.6 | Treinamento da IA | 3.5d | 2022-07-25 | 2022-07-28 | 11 | Vinícius Bandeira; Eduardo Candido |
| 13 | 1.2.7 | Testes internos de precisão | 1.5d | 2022-07-28 | 2022-07-29 | 12 | Eduardo Candido; Vinícius Bandeira |
| 14 | 1.3 | **3 - Implantação** | 16d | 2022-08-01 | 2022-08-22 |  |  |
| 15 | 1.3.1 | Documentação | 1d | 2022-08-01 | 2022-08-01 | 13 | Vinícius Bandeira; Eduardo Candido |
| 16 | 1.3.2 | Publicação do Software | 1d | 2022-08-02 | 2022-08-02 | 15 | Equipe de Programadores |
| 17 | 1.3.3 | Fabricação em Larga Escala | 14d | 2022-08-03 | 2022-08-22 | 16 | Montador do Protótipo |
